# 13XS487-Technical

Schedule from MS Project MPX, 2013-07-22 to 2014-09-18, A marks actual dates.

## Calendars

- Standard: Mon-Fri 08:00-12:00, 13:00-17:00; Sat-Sun off.

## Resources

| Resource |
| --- |
| Lantern Three Project Manager |
| Lantern Three Software Architect |
| NCI Documentation |
| NCI Project Officer |
| NCI Quality Assurance |
| NCI Systems |
| SAIC-F Technical Project Manager |

## Schedule

| ID | WBS | Task | Type | Duration | Start | Predecessors | Complete | Actual finish | Constraint | Resources |
| --- | --- | --- | --- | --- | --- | --- | --- | --- | --- | --- |
| 1 | 1 | Start | milestone | 0d | 2013-10-18 A |  | 100% | 2013-10-18 | start no earlier than 2013-10-18 |  |
| 2 | 2 | **caGrid Architectural Mentoring** |  |  | 2013-10-18 | 1 |  |  |  |  |
| 3 | 2.1 | caGrid Operations & Maintenance |  | 1y | 2013-10-18 | 1 |  |  |  | Lantern Three Software Architect; Lantern Three Project Manager |
| 4 | 3 | **caGrid 2.0 Cookbook Development** |  |  | 2013-10-18 | 1 |  |  |  |  |
| 5 | 3.1 | Start | milestone | 0d | 2013-10-18 | 1 |  |  |  |  |
| 6 | 3.2 | Upgrading caGrid Services 1.x to SHA-2 |  | 1w | 2013-10-18 | 5 |  |  |  | Lantern Three Software Architect |
| 7 | 3.3 | Splitting Grid Service Containers <?> |  | 1w | 2013-10-18 | 5 |  |  |  | Lantern Three Software Architect |
| 8 | 3.4 | Developing services for caGrid 2.0 |  | 3w | 2013-10-18 | 5 |  |  |  | Lantern Three Software Architect |
| 9 | 3.5 | End | milestone | 0d | 2013-11-07 | 6, 8, 7 |  |  |  |  |
| 10 | 4 | **caGrid 2.0 Deployment** |  |  | 2013-07-22 |  | 24% |  |  |  |
| 11 | 4.1 | Start | milestone | 0d | 2013-10-18 A | 1 | 100% | 2013-10-18 |  |  |
| 12 | 4.2 | Documentation |  | 3w | 2013-10-18 | 11 |  |  |  | Lantern Three Software Architect |
| 13 | 4.3 | **Deployment** |  |  | 2013-07-22 |  | 34% |  |  |  |
| 14 | 4.3.1 | Architecture Review Checklist |  | 1w | 2013-07-22 A | 11 | 100% | 2013-07-26 |  | Lantern Three Project Manager |
| 15 | 4.3.2 | Deployment to NCI QA |  | 1w | 2013-10-21 A | 14 | 100% | 2013-10-25 |  | NCI Systems |
| 16 | 4.3.3 | QA Testing |  | 3w | 2013-10-28 A | 15 | 25% |  |  |  |
| 17 | 4.3.4 | App Scan |  | 3d | 2013-11-18 | 16 |  |  |  |  |
| 18 | 4.3.5 | Deployment to NCI Stage |  | 1w | 2013-11-21 | 17 |  |  |  | NCI Systems |
| 19 | 4.3.6 | Deployment to NCI Production |  | 1w | 2013-11-28 | 18 |  |  |  | NCI Systems |
| 20 | 4.3.7 | End |  | 1d | 2013-12-05 | 19, 14, 16, 18, 15 |  |  |  |  |
| 21 | 5 | End | milestone | 0d | 2014-09-18 | 4, 3, 2, 20, 9 |  |  |  |  |
