# caGrid-1-3

Schedule from MS Project, 2008-07-17 to 2009-03-03, A marks actual dates.
caGrid 1.3
NCI CBIIT

## Calendars

- Standard: Mon-Fri 08:00-12:00, 13:00-17:00; Sat-Sun off.

## Resources

| Resource |
| --- |
| Scott Oster |
| Steve Langella |
| Shannon Hastings |
| David Ervin |
| Santhosh Garmilla |
| John Eisenschmidt |
| Knowledge Center |
| Carolyn Klinger |
| Quality Assurance |
| Systems |
| Manav Kher |
| Ravi Madduri |

## Schedule

| ID | WBS | Task | Type | Duration | Start | Finish | Predecessors | Complete | Remaining | Total slack | Free slack | Resources | Work | Actual work |
| --- | --- | --- | --- | --- | --- | --- | --- | --- | --- | --- | --- | --- | --- | --- |
| 1 | 1.0 | **caGrid 1.3 Development** |  | 122d? | 2008-07-17 A | 2009-01-02 |  | 72% | 33.83d? | 42d |  |  | 2909.6h | 1916.4h |
| 2 | 1.1 | Start | milestone | 0d | 2008-07-17 | 2008-07-17 |  |  |  | 149d |  |  |  |  |
| 3 | 1.2 | **Gold Compatibility** |  | 21d? | 2008-07-17 A | 2008-08-14 |  | 87% | 2.64d? | 143d |  |  | 509h | 364.6h |
| 4 | 1.2.1 | **GME Rewrite** |  | 21d? | 2008-07-17 A | 2008-08-14 A |  | 100% |  |  |  |  | 221h | 221h |
| 5 | 1.1.0 | Start | milestone | 0d | 2008-07-17 A | 2008-07-17 A |  | 100% |  |  |  | Scott Oster [50%] |  |  |
| 6 | 1.1.1 | MySQL 5.0 Support |  | 1d? | 2008-07-18 A | 2008-07-18 A | 5 | 100% |  |  |  | Scott Oster [50%] | 4h | 4h |
| 7 | 1.2.1.3 | Schemas with Cycles |  | 6.25d? | 2008-07-18 A | 2008-07-28 A | 5 | 100% |  |  |  | Scott Oster [50%] | 25h | 25h |
| 8 | 1.2.1.4 | Schemas with Includes/Redefines |  | 5d? | 2008-07-18 A | 2008-07-24 A | 5 | 100% |  |  |  | Scott Oster [50%] | 20h | 20h |
| 9 | 1.2.1.5 | URI Valid as Namespace |  | 1d? | 2008-07-18 A | 2008-07-18 A | 5 | 100% |  |  |  | Scott Oster [50%] | 4h | 4h |
| 10 | 1.2.1.6 | Metadata and WSDL reflect service operations |  | 1d? | 2008-07-18 A | 2008-07-18 A | 5 | 100% |  |  |  | Scott Oster [50%] | 4h | 4h |
| 11 | 1.2.1.7 | Update/Delete non-production schemas |  | 5d? | 2008-07-18 A | 2008-07-24 A | 5 | 100% |  |  |  | Scott Oster [50%] | 20h | 20h |
| 12 | 1.2.1.8 | Associate Arbitrarty Metadata or Annotations |  | 10d? | 2008-07-18 A | 2008-07-31 A | 5 | 100% |  |  |  | Scott Oster [50%] | 40h | 40h |
| 13 | 1.2.1.9 | Validate that XML conforms to schema in GME |  | 5d? | 2008-07-18 A | 2008-07-24 A | 5 | 100% |  |  |  | Scott Oster [50%] | 20h | 20h |
| 14 | 1.2.1.10 | GME has issues with mutliple elements of the same name/type in a complexType |  | 1d? | 2008-07-17 A | 2008-07-17 A | 5 | 100% |  |  |  | Scott Oster [50%] | 4h | 4h |
| 15 | 1.2.1.11 | Non-RFE Development |  | 20d | 2008-07-18 A | 2008-08-14 A | 5 | 100% |  |  |  | Scott Oster [50%] | 80h | 80h |
| 16 | 1.2.1.12 | Finish | milestone | 0d | 2008-08-14 A | 2008-08-14 A | 6, 7, 8, 9, 10, 11, 12, 13, 15, 14 | 100% |  |  |  | Scott Oster [50%] |  |  |
| 17 | 1.2.2 | **caDSR Grid Service Replacement** |  | 21d? | 2008-07-17 A | 2008-08-14 A |  | 100% |  |  |  |  | 140h | 140h |
| 18 | 1.2.2.1 | Start | milestone | 0d | 2008-07-17 A | 2008-07-17 A |  | 100% |  |  |  | Scott Oster [50%] |  |  |
| 19 | 1.2.2.2 | Design |  | 5d? | 2008-07-18 A | 2008-07-24 A | 18 | 100% |  |  |  | Scott Oster [50%] | 20h | 20h |
| 20 | 1.2.2.3 | Development |  | 20d? | 2008-07-18 A | 2008-08-14 A | 18 | 100% |  |  |  | Scott Oster [50%] | 80h | 80h |
| 21 | 1.2.2.4 | Migration of code depenedencies on caDSR grid service (Introduce extensions) |  | 5d? | 2008-07-18 A | 2008-07-24 A | 18 | 100% |  |  |  | Scott Oster [50%] | 20h | 20h |
| 22 | 1.2.4 | Developer Testing |  | 5d? | 2008-07-18 A | 2008-07-24 A | 18 | 100% |  |  |  | Scott Oster [50%] | 20h | 20h |
| 23 | 1.2.5 | Finish | milestone | 0d | 2008-08-14 A | 2008-08-14 A | 19, 20, 22, 21 | 100% |  |  |  | Scott Oster [50%] |  |  |
| 24 | 1.2.3 | **Make Core Services Gold Compatible** |  | 7d? | 2008-07-17 A | 2008-07-25 |  | 6% | 6.55d? | 157d |  |  | 148h | 3.6h |
| 25 | 1.2.3.1 | Start | milestone | 0d | 2008-07-17 | 2008-07-17 |  |  |  | 158.9d | 1d |  |  |  |
| 26 | 1.2.3.2 | Identify Services to be made Gold Compatible |  | 1d? | 2008-07-18 A | 2008-07-18 | 25 | 90% | 0.1d? | 157d | 0d | Scott Oster [50%] | 4h | 3.6h |

Notes:
- 21: This creates a backwards incompatibility for existing Introduce installations which would expect to be able to communicate with the existing caDSR grid service; we should leave this instance running, and deprecate it (if ncessary, we can create new versions of these extensions for past releases of Introduce if necessary.
- 24: caGrid 1.3 should focus on non-backwards compatibility issues (not refactoring service interfaces); I will create a detailed wbs for this sepecifically

| ID | WBS | Task | Type | Duration | Start | Finish | Predecessors | Complete | Remaining | Total slack | Free slack | Constraint | Resources | Work | Actual work |
| --- | --- | --- | --- | --- | --- | --- | --- | --- | --- | --- | --- | --- | --- | --- | --- |
| 27 | 1.2.3.3 | **Register Object and Metadata Models** |  | 5d | 2008-07-18 | 2008-07-25 |  |  |  | 157d |  |  | John Eisenschmidt | 144h |  |
| 28 | 1.3.3.1 | Start | milestone | 0d | 2008-07-18 | 2008-07-18 | 26 |  |  | 157d | 0d |  | John Eisenschmidt |  |  |
| 29 | 1.3.3.2 | CQL |  | 5d | 2008-07-21 | 2008-07-25 | 28 |  |  | 157d | 0d |  | John Eisenschmidt | 40h |  |
| 30 | 1.2.3.3.3 | CQL Results |  | 2d | 2008-07-21 | 2008-07-22 | 28 |  |  | 160d | 3d |  | John Eisenschmidt | 16h |  |
| 31 | 1.2.3.3.4 | Service Metadata |  | 2d | 2008-07-21 | 2008-07-22 | 28 |  |  | 160d | 3d |  | John Eisenschmidt | 16h |  |
| 32 | 1.2.3.3.5 | Security Metadata |  | 2d | 2008-07-21 | 2008-07-22 | 28 |  |  | 160d | 3d |  | John Eisenschmidt | 16h |  |
| 33 | 1.2.3.3.6 | Data Services Object Model |  | 2d | 2008-07-21 | 2008-07-22 | 28 |  |  | 160d | 3d |  | John Eisenschmidt | 16h |  |
| 34 | 1.2.3.3.7 | Finish | milestone | 0d | 2008-07-25 | 2008-07-25 | 29, 30, 31, 32, 33 |  |  | 157d | 0d |  | John Eisenschmidt |  |  |
| 35 | 1.2.3.4 | Finish | milestone | 0d | 2008-07-25 | 2008-07-25 | 26, 34 |  |  | 157d | 93.75d |  |  |  |  |
| 36 | 1.3 | **caCORE Integration** |  | 15d | 2008-07-17 A | 2008-08-06 |  |  | 15d | 149d |  |  |  | 492h |  |
| 37 | 1.3.1 | Start | milestone | 0d | 2008-07-17 A | 2008-07-17 A |  | 100% |  |  |  |  |  |  |  |
| 38 | 1.3.2 | Implementation of Common Testing between Grid and SDK |  | 15d | 2008-07-17 | 2008-08-06 | 37 |  |  | 149d | 0d |  | David Ervin | 120h |  |
| 39 | 1.3.3 | Identify modeling gaps/requirements for the analytical/data service |  | 10d | 2008-07-17 | 2008-07-30 | 37 |  |  | 154d | 5d |  | David Ervin | 80h |  |
| 40 | 1.3.4 | CQL/CQL2 Integration in SDK |  | 15d | 2008-07-17 | 2008-08-06 | 37 |  |  | 149d | 0d |  | David Ervin | 120h |  |
| 41 | 1.3.5 | Data Service plug-in for SDK 4.1 |  | 10d | 2008-07-17 | 2008-07-30 | 37 |  |  | 154d | 5d |  | David Ervin | 80h |  |
| 42 | 1.3.6 | Introduce upgrade to SDK 4.1 |  | 5d | 2008-07-17 | 2008-07-23 | 37 |  |  | 159d | 10d |  | Scott Oster [50%] | 20h |  |
| 43 | 1.3.7 | Proxy Framework and XML serialization integration in Grid Service |  | 5d | 2008-07-17 | 2008-07-23 | 37 |  |  | 159d | 10d |  | Shannon Hastings | 40h |  |
| 44 | 1.3.8 | XMI Reader API Integration in Introduce |  | 5d | 2008-07-17 | 2008-07-23 | 37 |  |  | 159d | 10d |  | David Ervin [80%] | 32h |  |
| 45 | 1.3.9 | Finish | milestone | 0d | 2008-08-06 | 2008-08-06 | 38, 39, 40, 41, 42, 43, 44 |  |  | 149d | 85.75d |  |  |  |  |
| 46 | 1.4 | **Bug Fixes** |  | 41d? | 2008-07-17 A | 2008-09-11 |  | 44% | 22.9d? | 123d |  |  |  | 261.6h | 116.8h |
| 47 | 1.4.1 | Start | milestone | 0d | 2008-07-17 A | 2008-07-17 A |  | 100% |  |  |  |  |  |  |  |
| 48 | 1.4.2 | SDK 4 data service wizard fails with 'No Domain Model' |  | 1d | 2008-09-05 A | 2008-09-05 A | 47 | 100% |  |  |  | start no earlier than 2008-09-05 | David Ervin | 8h | 8h |
| 49 | 1.4.3 | When the trasfer resource is being destroyed it tries to delete the cache file. If the cache files does not exist it throws a resource exception. |  | 1d? | 2008-07-17 A | 2008-07-17 A | 47 | 100% |  |  |  |  | Shannon Hastings | 8h | 8h |
| 50 | 1.4.4 | 2 >= 2 error in GridGrouper my groups |  | 1d? | 2008-07-17 | 2008-07-17 | 47 |  |  | 163d | 40d |  | Steve Langella | 8h |  |
| 51 | 1.4.5 | Introduce is not passing any system properties on to it's ant calls it makes when running the engine. |  | 1d? | 2008-07-17 | 2008-07-17 | 47 |  |  | 163d | 40d |  | Shannon Hastings | 8h |  |
| 52 | 1.4.6 | caDSR Grid Service API does not provide access to semantic metadata (concept codes) |  | 2d? | 2008-07-18 | 2008-07-21 | 47 |  |  | 161d | 38d |  | Scott Oster [50%] | 8h |  |
| 53 | 1.4.7 | Security Service Metadata Anonymous Clients Ignored in Grid Grouper |  | 1d? | 2008-07-17 | 2008-07-17 | 47 |  |  | 163d | 40d |  | Steve Langella | 8h |  |
| 54 | 1.4.8 | caCORE backed data services don't handle queries with single quotes in query parameters |  | 1d? | 2008-07-17 A | 2008-07-17 A | 47 | 100% |  |  |  |  | David Ervin | 8h | 8h |
| 55 | 1.4.9 | caDSR Type Browser doesn't let you correct a namespace that is invalid (as opposed to not found) |  | 4d? | 2008-07-18 | 2008-07-23 | 47 |  |  | 159d | 36d |  | Scott Oster [50%] | 16h |  |
| 56 | 1.4.10 | DataService gets in inconsistent state and returns confusing errors when not properly initialized |  | 1d? | 2008-07-17 | 2008-07-17 | 47 |  |  | 163d | 40d |  | David Ervin | 8h |  |
| 57 | 1.4.11 | Grid Grouper Authorization not configured but service can be deployed |  | 1d? | 2008-07-17 A | 2008-07-17 A | 47 | 100% |  |  |  |  | Steve Langella | 8h | 8h |
| 58 | 1.4.12 | Introduce error importing Type schemas it generated. |  | 1d? | 2008-09-04 A | 2008-09-04 A | 47 | 100% |  |  |  | finish no earlier than 2008-09-04 | Shannon Hastings | 8h | 8h |
| 59 | 1.4.13 | GTS does not remove permissions when a CA is deleted. |  | 1d? | 2008-07-17 | 2008-07-17 | 47 |  |  | 163d | 40d |  | Steve Langella | 8h |  |
| 60 | 1.4.14 | Spaces in GLOBUS_LOCATION causing errors on deployment for Introduce created services |  | 1d? | 2008-07-17 | 2008-07-17 | 47 |  |  | 163d | 40d |  | Shannon Hastings | 8h |  |
| 61 | 1.4.15 | When importing a method from another introduce service package names are broken |  | 1d | 2008-09-04 A | 2008-09-04 A | 47 | 100% |  |  |  |  | Shannon Hastings | 8h | 8h |
| 62 | 1.4.16 | SyncGTS is an Introduce 1.1 service will conflict with a container running newer services. |  | 1d? | 2008-07-17 | 2008-07-17 | 47 |  |  | 163d | 40d |  | Steve Langella | 8h |  |
| 63 | 1.4.17 | Lowercase chars in complexType names from schema can cause compile failure |  | 1.25d? | 2008-07-17 | 2008-07-18 | 47 |  |  | 162.75d | 39.75d |  | David Ervin [80%] | 8h |  |
| 64 | 1.4.18 | caGrid authentication service authentications fail after change of password on NCI LDAP |  | 1d? | 2008-07-17 A | 2008-07-17 A | 47 | 100% |  |  |  |  | Steve Langella | 8h | 8h |
| 65 | 1.4.19 | SyncGTS is using log4j directly instead of commons logging which causes some logging statements to not be shown in Tomcat |  | 1d? | 2008-07-17 | 2008-07-17 | 47 |  |  | 163d | 40d |  | Steve Langella | 8h |  |
| 66 | 1.4.20 | Remove references to log4j in projects and only use commons logging |  | 2d? | 2008-07-17 | 2008-07-18 | 47 |  |  | 162d | 39d |  | Steve Langella; Scott Oster [50%]; Shannon Hastings; David Ervin | 28h |  |
| 67 | 1.4.21 | Multiple services using WS-Enumeration cannot run in same container |  | 1d? | 2008-07-17 | 2008-07-17 | 47 |  |  | 163d | 40d |  | David Ervin [80%] | 6.4h |  |
| 68 | 1.4.22 | Introduce configure types validator lets you save when there are validation errors |  | 1d | 2008-09-04 A | 2008-09-04 A | 47 | 100% |  |  |  |  | Shannon Hastings | 8h | 8h |
| 69 | 1.4.23 | Subject in Dorian limited to 255 characters |  | 1d? | 2008-07-17 | 2008-07-17 | 47 |  |  | 163d | 40d |  | Steve Langella | 8h |  |
| 70 | 1.4.24 | Introduce Log Viewer hangs in certain scenarios |  | 1d? | 2008-07-17 A | 2008-07-17 A | 47 | 100% |  |  |  |  | Shannon Hastings | 8h | 8h |
| 71 | 1.4.25 | Gaards UI throws an error popup that makes the UI unusable |  | 1d? | 2008-07-18 | 2008-07-18 | 47 |  |  | 162d | 39d |  | Steve Langella [80%] | 6.4h |  |
| 72 | 1.4.26 | SDK 4 Data Service wizard can blank copied schema files |  | 1d | 2008-09-04 A | 2008-09-04 A | 47 | 100% |  |  |  | finish no earlier than 2008-09-04 | David Ervin [80%] | 6.4h | 6.4h |
| 73 | 1.4.27 | A deployed service in a different context (not caGrid) cannot create TransferServiceContext |  | 1d | 2008-07-17 A | 2008-07-17 A | 47 | 100% |  |  |  |  | Shannon Hastings [80%] | 6.4h | 6.4h |
| 74 | 1.4.28 | Pasting values in to fields on SDK 4 wizard configuration causes exception |  | 1d | 2008-09-08 A | 2008-09-08 A | 47 | 100% |  |  |  | start no earlier than 2008-09-08 | David Ervin [80%] | 6.4h | 6.4h |
| 75 | 1.4.29 | Introduce service security metadata is not consistent with security descriptor for resource property operations |  | 1d | 2008-09-10 A | 2008-09-10 A | 47 | 100% |  |  |  | start no earlier than 2008-09-10 | Shannon Hastings [80%] | 6.4h | 6.4h |
| 76 | 1.4.30 | Enter key on dorian login window is not mapped to the login button |  | 1d | 2008-09-11 A | 2008-09-11 A | 47 | 100% |  |  |  |  | Steve Langella [80%] | 6.4h | 6.4h |
| 77 | 1.4.31 | SDK 3.2 query processor makes potentially slow probing query |  | 1d | 2008-07-17 A | 2008-07-17 A | 47 | 100% |  |  |  |  | David Ervin [80%] | 6.4h | 6.4h |
| 78 | 1.4.32 | Haste storyTearDown() never gets in some situations |  | 1d | 2008-07-17 A | 2008-07-17 A | 47 | 100% |  |  |  |  | David Ervin [80%] | 6.4h | 6.4h |
| 79 | 1.4.33 | Finish | milestone | 0d | 2008-09-11 | 2008-09-11 | 48, 49, 50, 51, 52, 53, 54, 55, 56, 57, 58, 59, 60, 61, 62, 63, 64, 65, 66, 67, 68, 69, 70, 71, 72, 73, 74, 75, 76, 78, 77 |  |  | 123d | 59.75d |  |  |  |  |

Notes:
- 43: This is a low priority and we might want to bump it
- 52: This is really a "missing feature" and should/would be satisfied be the new caDSR grid service / This is already referenced above in 1.2.2, just pointing it out explicitly.
- 54: I updated the tracker; this is a limitation which can't be fixed for caCORE SDK 3.1 and 3.2(.1), but was addressed in caGrid 1.2 when adding support for caCORE SDK 4.0. Should we close the bug?
- 58: Won't Fix
- 63: This is something we can't fix; should we close the bug?
- 73: Won't Fix

| ID | WBS | Task | Type | Duration | Start | Finish | Predecessors | Complete | Remaining | Total slack | Resources | Work | Actual work |
| --- | --- | --- | --- | --- | --- | --- | --- | --- | --- | --- | --- | --- | --- |
| 80 | 1.5 | **WebSSO** |  | 2d? | 2008-07-17 A | 2008-07-18 |  | 92% | 0.17d? | 162d |  | 48h | 44h |
| 81 | 1.5.1 | Start | milestone | 0d | 2008-07-17 A | 2008-07-17 A |  | 100% |  |  |  |  |  |
| 82 | 1.5.2 | Properties not set for service redirect/cookie age within the cas-servlet.xml file |  | 1d? | 2008-07-17 A | 2008-07-17 A | 81 | 100% |  |  | Santhosh Garmilla [50%] | 4h | 4h |
| 83 | 1.5.3 | CaGridWebSSOAttributeLoaderFilter will not work as designed |  | 1d? | 2008-07-17 A | 2008-07-17 A | 81 | 100% |  |  | Santhosh Garmilla [50%] | 4h | 4h |
| 84 | 1.5.4 | WebSSO project is missing jar dependencies for syncGTS |  | 1d? | 2008-07-17 A | 2008-07-17 A | 81 | 100% |  |  | Santhosh Garmilla [50%] | 4h | 4h |
| 85 | 1.5.5 | classnotfoundexception when deploying to tomcat 5.5+ |  | 1d? | 2008-07-17 A | 2008-07-17 A | 81 | 100% |  |  | Santhosh Garmilla [50%] | 4h | 4h |
| 86 | 1.5.6 | Update Build Process |  | 1d? | 2008-07-18 A | 2008-07-18 A | 81 | 100% |  |  | Santhosh Garmilla [50%] | 4h | 4h |
| 87 | 1.5.7 | Update the Sample Application |  | 1d? | 2008-07-17 A | 2008-07-17 A | 81 | 100% |  |  | Santhosh Garmilla [50%] | 4h | 4h |
| 88 | 1.5.8 | Create an Installer |  | 1d? | 2008-07-17 | 2008-07-17 | 81 |  |  | 163d | Santhosh Garmilla [50%] | 4h |  |
| 89 | 1.5.9 | Author System Tests for WebSSO |  | 1d? | 2008-07-17 A | 2008-07-17 A | 81 | 100% |  |  | Santhosh Garmilla [50%] | 4h | 4h |
| 90 | 1.5.10 | Acegi client |  | 1d? | 2008-07-17 A | 2008-07-17 A | 81 | 100% |  |  | Santhosh Garmilla [50%] | 4h | 4h |
| 91 | 1.5.11 | Single sign-out |  | 1d? | 2008-07-17 A | 2008-07-17 A | 81 | 100% |  |  | Santhosh Garmilla [50%] | 4h | 4h |
| 92 | 1.5.12 | Support out-of-box integration with Liferay (caGrid Portal 2.x) |  | 1d? | 2008-07-17 A | 2008-07-17 A | 81 | 100% |  |  | Santhosh Garmilla [50%] | 4h | 4h |
| 93 | 1.5.13 | Enhance existing documentation |  | 1d? | 2008-07-17 A | 2008-07-17 A | 81 | 100% |  |  | Santhosh Garmilla [50%] | 4h | 4h |
| 94 | 1.5.14 | Finish | milestone | 0d | 2008-07-18 A | 2008-07-18 A | 83, 84, 85, 86, 87, 88, 89, 90, 91, 92, 93, 82 | 100% |  |  |  |  |  |
| 95 | 1.6 | **Continuous Innovation** |  | 112.75d? | 2008-07-17 A | 2008-12-22 A |  | 100% |  |  |  | 145.4h | 145.4h |
| 96 | 1.6.1 | Start | milestone | 0d | 2008-07-17 A | 2008-07-17 A | 2 | 100% |  |  |  |  |  |
| 97 | 5.3 | Support common technology stack for caGrid infrastructure |  | 1d? | 2008-07-17 A | 2008-07-17 A | 96 | 100% |  |  | Knowledge Center | 8h | 8h |
| 98 | 1.6.3 | **Update installer** |  | 12d | 2008-12-04 A | 2008-12-22 A |  | 100% |  |  |  | 108h | 108h |
| 99 | 1.6.3.1 | Start | milestone | 0d | 2008-12-04 A | 2008-12-04 A | 169 | 100% |  |  |  |  |  |
| 100 | 1.6.3.2 | Refactor Installer (Desktop only, no Server/Service) |  | 10d | 2008-12-04 A | 2008-12-18 A | 99 | 100% |  |  | Shannon Hastings [80%] | 64h | 64h |
| 101 | 1.6.3.3 | integrate latest portal release |  | 2d | 2008-12-18 A | 2008-12-22 A | 100 | 100% |  |  | Manav Kher | 16h | 16h |
| 102 | 1.6.3.4 | integrate WF client release? |  | 2d | 2008-12-04 A | 2008-12-08 A | 99 | 100% |  |  | Ravi Madduri | 16h | 16h |
| 103 | 1.6.3.5 | updates for tech stack (tomcat versions, etc) |  | 3d | 2008-12-04 A | 2008-12-09 A | 99 | 100% |  |  | Scott Oster [50%] | 12h | 12h |
| 104 | 1.6.3.6 | Finish | milestone | 0d | 2008-12-22 A | 2008-12-22 A | 101, 102, 103 | 100% |  |  |  |  |  |
| 105 | 1.6.4 | Remove old EVS grid service |  | 1d | 2008-07-18 A | 2008-07-18 A | 96 | 100% |  |  | Scott Oster [50%] | 4h | 4h |
| 106 | 1.6.5 | Remove old caDSR grid service |  | 1d | 2008-07-18 A | 2008-07-18 A | 96 | 100% |  |  | Scott Oster [50%] | 4h | 4h |

Notes:
- 88: We should discuss the scope of this.

| ID | WBS | Task | Type | Duration | Start | Finish | Predecessors | Complete | Remaining | Total slack | Constraint | Resources | Work | Actual work |
| --- | --- | --- | --- | --- | --- | --- | --- | --- | --- | --- | --- | --- | --- | --- |
| 107 | 1.6.6 | **Update core caGrid Services using Introduce 1.3** |  | 1d? | 2008-11-07 A | 2008-11-10 A |  | 100% |  |  |  | David Ervin [80%]; Shannon Hastings [80%]; Steve Langella [80%]; Scott Oster [50%] | 21.4h | 21.4h |
| 108 | 1.6.6.1 | Start | milestone | 0d | 2008-11-07 A | 2008-11-07 A | 145 | 100% |  |  | start no earlier than 2008-07-17 |  |  |  |
| 109 | 1.6.6.2 | Dorian |  | 1d? | 2008-11-10 A | 2008-11-10 A | 108 | 100% |  |  | start no earlier than 2008-07-17 |  |  |  |
| 110 | 1.6.6.3 | Authentication Service |  | 1d? | 2008-11-10 A | 2008-11-10 A | 108 | 100% |  |  | start no earlier than 2008-07-17 |  |  |  |
| 111 | 1.6.6.4 | GTS Master |  | 1d? | 2008-11-10 A | 2008-11-10 A | 108 | 100% |  |  | start no earlier than 2008-07-17 |  |  |  |
| 112 | 1.6.6.5 | GTS Slave |  | 1d? | 2008-11-10 A | 2008-11-10 A | 108 | 100% |  |  | start no earlier than 2008-07-17 |  |  |  |
| 113 | 1.6.6.6 | CDS |  | 1d? | 2008-11-10 A | 2008-11-10 A | 108 | 100% |  |  | start no earlier than 2008-07-17 |  |  |  |
| 114 | 1.6.6.7 | Grouper |  | 1d? | 2008-11-10 A | 2008-11-10 A | 108 | 100% |  |  | start no earlier than 2008-07-17 |  |  |  |
| 115 | 1.6.6.8 | GME |  | 1d? | 2008-11-10 A | 2008-11-10 A | 108 | 100% |  |  | start no earlier than 2008-07-17 |  |  |  |
| 116 | 1.6.6.9 | FQP |  | 1d? | 2008-11-10 A | 2008-11-10 A | 108 | 100% |  |  | start no earlier than 2008-07-17 |  |  |  |
| 117 | 1.6.6.10 | Workflow |  | 1d? | 2008-11-10 A | 2008-11-10 A | 108 | 100% |  |  | start no earlier than 2008-07-17 |  |  |  |
| 118 | 1.6.6.11 | Finish | milestone | 0d | 2008-11-10 A | 2008-11-10 A | 117, 109, 110, 111, 112, 113, 114, 115, 116 | 100% |  |  | start no earlier than 2008-07-17 |  |  |  |
| 119 | 1.6.7 | Finish | milestone | 0d | 2008-12-22 A | 2008-12-22 A | 97, 104, 105, 106, 118 | 100% |  |  |  |  |  |  |
| 120 | 1.7 | **Data Services** |  | 66d | 2008-07-17 A | 2008-10-16 |  | 67% | 21.79d | 98d |  |  | 339.2h | 227.2h |
| 121 | 1.7.1 | Start | milestone | 0d | 2008-07-17 A | 2008-07-17 A |  | 100% |  |  |  |  |  |  |
| 122 | 1.7.2 | CQL/CQL2 Integration in SDK |  | 15d | 2008-07-17 | 2008-08-06 | 121 |  |  | 149d |  | David Ervin [80%] | 96h |  |
| 123 | 1.7.3 | FQP should support delegation |  | 5d | 2008-07-17 A | 2008-07-23 | 121 | 50% | 2.5d | 159d |  | David Ervin [80%] | 32h | 16h |
| 124 | 1.7.4 | FQP should support ws-enumeration transfer of results |  | 10d | 2008-09-26 A | 2008-10-09 A | 121 | 100% |  |  | finish no earlier than 2008-10-09 | David Ervin [80%] | 64h | 64h |
| 125 | 1.7.5 | FQP should support ws-notification |  | 5d | 2008-07-17 A | 2008-07-23 A | 121 | 100% |  |  |  | David Ervin [80%] | 32h | 32h |
| 126 | 1.7.6 | FQP should support caGrid Transfer of results |  | 6d | 2008-10-09 A | 2008-10-16 A | 121 | 100% |  |  | start no earlier than 2008-10-09 | David Ervin [80%] | 38.4h | 38.4h |
| 127 | 1.7.7 | DCQL fails when some target services are down |  | 5d | 2008-07-17 A | 2008-07-23 A | 121 | 100% |  |  |  | David Ervin [80%] | 32h | 32h |
| 128 | 1.7.8 | Add additional utilities for working with query results |  | 5d | 2008-07-17 A | 2008-07-23 A | 121 | 100% |  |  |  | David Ervin [80%] | 32h | 32h |
| 129 | 1.7.9 | silent exceptions (no service properties from custom query processor) when adding a custom query processor using Introduce data extension |  | 2d | 2008-07-17 A | 2008-07-18 A | 121 | 100% |  |  |  | David Ervin [80%] | 12.8h | 12.8h |
| 130 | 1.7.10 | Finish | milestone | 0d | 2008-10-16 A | 2008-10-16 A | 122, 123, 124, 125, 128, 129, 127, 126 | 100% |  |  |  |  |  |  |

| ID | WBS | Task | Type | Duration | Start | Finish | Predecessors | Complete | Remaining | Total slack | Free slack | Constraint | Resources | Work | Actual work |
| --- | --- | --- | --- | --- | --- | --- | --- | --- | --- | --- | --- | --- | --- | --- | --- |
| 131 | 1.8 | **Introduce** |  | 100.75d? | 2008-07-17 A | 2008-12-04 A |  | 100% |  |  |  |  |  | 666.4h | 666.4h |
| 132 | 1.8.1 | Start | milestone | 0d | 2008-07-17 A | 2008-07-17 A |  | 100% |  |  |  |  |  |  |  |
| 133 | 1.8.2 | Refactor Introduce Security |  | 10d | 2008-07-17 A | 2008-07-30 A | 132 | 100% |  |  |  |  | Shannon Hastings [80%] | 64h | 64h |
| 134 | 1.8.3 | Grid Grouper Introduce Authorization Extension |  | 10d | 2008-07-31 A | 2008-08-13 A | 132, 133 | 100% |  |  |  |  | Shannon Hastings [80%] | 64h | 64h |
| 135 | 1.8.4 | CSM Introduce Authorization Extension |  | 10d | 2008-07-31 A | 2008-08-13 A | 132, 133 | 100% |  |  |  |  | Shannon Hastings [80%] | 64h | 64h |
| 136 | 1.8.5 | Need a way to hook in pre-deployment validation checks to enforce policy |  | 10d | 2008-07-17 A | 2008-07-30 A | 132 | 100% |  |  |  |  | Shannon Hastings [80%] | 64h | 64h |
| 137 | 1.8.6 | Improve Introduce usability when adding extensions or service contexts |  | 4d | 2008-07-17 A | 2008-07-22 A | 132 | 100% |  |  |  |  | Shannon Hastings [80%] | 25.6h | 25.6h |
| 138 | 1.8.7 | Introduce services which support persistence are hard to customize persistence on the resource itself |  | 10d | 2008-09-26 A | 2008-10-09 A | 132 | 100% |  |  |  | start no earlier than 2008-09-26 | Shannon Hastings [80%] | 64h | 64h |
| 139 | 1.8.8 | Introduce client code should be more override friendly |  | 10d | 2008-09-16 A | 2008-09-29 A | 132 | 100% |  |  |  |  | Shannon Hastings [80%] | 64h | 64h |
| 140 | 1.8.9 | Introduce clients do not set user credential when returning client handle to stateful resources |  | 5d | 2008-09-05 A | 2008-09-11 A | 132 | 100% |  |  |  |  | Shannon Hastings [80%] | 32h | 32h |
| 141 | 1.8.10 | Introduce Service tab should use tooltips in the jtree |  | 5d | 2008-07-17 A | 2008-07-23 A | 132 | 100% |  |  |  |  | Shannon Hastings [80%] | 32h | 32h |
| 142 | 1.8.11 | Problem with Anonymous Security Setting |  | 1d? | 2008-09-15 A | 2008-09-15 A | 132 | 100% |  |  |  |  | Shannon Hastings [80%] | 6.4h | 6.4h |
| 143 | 1.8.12 | Review Advertisement settings |  | 5d? | 2008-09-21 A | 2008-09-26 A | 132 | 100% |  |  |  | finish no earlier than 2008-09-15 | Scott Oster [50%] | 20h | 20h |
| 144 | 1.8.13 | ServiceConstants file shouldn't get completely re-written every save |  | 1d | 2008-10-16 A | 2008-10-16 A | 132 | 100% |  |  |  | start no earlier than 2008-10-16 | Shannon Hastings [80%] | 6.4h | 6.4h |
| 145 | 1.8.14 | Introduce Feature Freeze (milestone) | milestone | 0d | 2008-11-07 A | 2008-11-07 A | 133, 134, 135, 136, 137, 138, 139, 140, 141, 142, 144, 143 | 100% |  |  |  | finish no earlier than 2008-11-07 | Shannon Hastings [80%] |  |  |
| 146 | 1.8.15 | Introduce Upgraders (1.1->1.3) |  | 6.25d? | 2008-11-10 A | 2008-11-18 A | 145 | 100% |  |  |  |  | Shannon Hastings [80%] | 40h | 40h |
| 147 | 1.8.16 | Introduce Upgraders (1.2->1.3) |  | 18.75d? | 2008-11-10 A | 2008-12-04 A | 145 | 100% |  |  |  |  | Shannon Hastings [80%] | 120h | 120h |
| 148 | 1.8.17 | Finish | milestone | 0d | 2008-12-04 A | 2008-12-04 A | 146, 147 | 100% |  |  |  |  |  |  |  |
| 149 | 1.9 | **Security** |  | 93d | 2008-07-17 A | 2008-11-24 |  | 79% | 19.93d | 71d |  |  |  | 448h | 352h |
| 150 | 1.9.1 | Start | milestone | 0d | 2008-07-17 A | 2008-07-17 A |  | 100% |  |  |  |  |  |  |  |
| 151 | 1.9.2 | Support multiple authentication profile |  | 5d | 2008-10-06 A | 2008-10-10 A | 150 | 100% |  |  |  |  | Steve Langella [80%] | 32h | 32h |
| 152 | 1.9.3 | Authentication Profile Service Metadata |  | 2d | 2008-10-13 A | 2008-10-14 A | 150 | 100% |  |  |  |  | Steve Langella [80%] | 12.8h | 12.8h |
| 153 | 1.9.4 | Update GAARDS UI to leverage new Authentication Profile / Trusted IdP metadata |  | 1d | 2008-07-18 A | 2008-07-18 A | 150 | 100% |  |  |  |  | Steve Langella [80%] | 6.4h | 6.4h |
| 154 | 1.9.5 | Develop system integration tests for the Authentication Service |  | 3d | 2008-10-15 A | 2008-10-17 A | 150 | 100% |  |  |  |  | Steve Langella [80%] | 19.2h | 19.2h |
| 155 | 1.9.6 | Develop system integration tests for the GTS |  | 10d | 2008-10-20 | 2008-10-31 | 154 |  |  | 86d | 0d |  | Steve Langella [80%] | 64h |  |
| 156 | 1.9.7 | SyncGTS needs to use service property for sync description |  | 1d | 2008-11-03 | 2008-11-03 | 155 |  |  | 86d |  |  | Steve Langella [80%] | 6.4h |  |
| 157 | 1.9.8 | API to discover trusted IDs (Use case for caB2B security requirements) |  | 2d | 2008-11-04 A | 2008-11-05 A | 156 | 100% |  |  |  |  | Steve Langella [80%] | 12.8h | 12.8h |
| 158 | 1.9.9 | Service Security Client needs a way to say to always use credential |  | 1d | 2008-11-06 | 2008-11-06 | 157 |  |  | 80d | 0d | start no earlier than 2008-10-08 | Shannon Hastings [80%] | 6.4h |  |
| 159 | 1.9.10 | Spring enable Dorian |  | 3d | 2008-11-07 | 2008-11-11 | 158 |  |  | 80d |  |  | Steve Langella [80%] | 19.2h |  |
| 160 | 1.9.11 | Implement new Authentication Service interface |  | 5d | 2008-11-12 A | 2008-11-18 A | 159 | 100% |  |  |  |  | Steve Langella [80%] | 32h | 32h |
| 161 | 1.9.12 | Add Authentication Profile Metadata to Dorian. |  | 1d | 2008-11-19 A | 2008-11-19 A | 160 | 100% |  |  |  |  | Steve Langella [80%] | 6.4h | 6.4h |
| 162 | 1.9.13 | Extend Trusted Identity Provider information to include information regarding the IdP's Authentication Service |  | 2d | 2008-11-20 A | 2008-11-21 A | 161 | 100% |  |  |  |  | Steve Langella [80%] | 12.8h | 12.8h |
| 163 | 1.9.14 | Add Trusted IdP metadata to Dorian |  | 1d | 2008-11-24 A | 2008-11-24 A | 162 | 100% |  |  |  |  | Steve Langella [80%] | 6.4h | 6.4h |
| 164 | 1.9.15 | Move from issuing Proxy Certificates to Issuing short term certificates. |  | 10d | 2008-07-18 A | 2008-07-31 A | 150 | 100% |  |  |  |  | Steve Langella [80%] | 64h | 64h |
| 165 | 1.9.16 | Enable Dorian Host Certificates to work with new version of IE and Firefox |  | 3d | 2008-07-18 A | 2008-07-22 A | 150 | 100% |  |  |  |  | Steve Langella [80%] | 19.2h | 19.2h |
| 166 | 1.9.17 | Add Account Audting to Dorian |  | 10d | 2008-07-18 A | 2008-07-31 A | 150 | 100% |  |  |  |  | Steve Langella [80%] | 64h | 64h |
| 167 | 1.9.18 | Reformat GAARDS UI to display properly on the MAC |  | 10d | 2008-07-18 A | 2008-07-31 A | 150 | 100% |  |  |  |  | Steve Langella [80%] | 64h | 64h |
| 168 | 1.9.19 | Finish | milestone | 0d | 2008-11-24 A | 2008-11-24 A | 151, 152, 153, 154, 155, 156, 157, 158, 159, 160, 161, 162, 163, 164, 165, 166, 167 | 100% |  |  |  |  |  |  |  |
| 169 | 1.10 | Code Freeze | milestone | 0d | 2008-12-04 A | 2008-12-04 A | 16, 23, 35, 45, 79, 94, 130, 148, 168 | 100% |  |  |  |  |  |  |  |
| 170 | 1.11 | Finish | milestone | 0d | 2009-01-02 A | 2009-01-02 A | 119 | 100% |  |  |  | finish no earlier than 2009-01-02 |  |  |  |

| ID | WBS | Task | Type | Duration | Start | Finish | Predecessors | Complete | Remaining | Total slack | Free slack | Constraint | Resources | Work | Actual work |
| --- | --- | --- | --- | --- | --- | --- | --- | --- | --- | --- | --- | --- | --- | --- | --- |
| 171 | 2.0 | **caGrid 1.3 Transition** |  | 42d? | 2009-01-02 A | 2009-03-03 |  | 9% | 38.03d? | 0d |  |  |  | 561.6h | 36h |
| 172 | 2.1 | Start | milestone | 0d | 2009-01-02 | 2009-01-02 | 170 |  |  | 42d |  |  |  |  |  |
| 173 | 2.2 | **Documentation** |  | 4.64d? | 2009-01-02 A | 2009-01-09 |  |  | 4.64d? | 37.36d |  |  |  | 106.4h |  |
| 174 | 2.2.1 | Start | milestone | 0d | 2009-01-02 A | 2009-01-02 A | 172 | 100% |  |  |  |  |  |  |  |
| 175 | 2.2.2 | Update Administrator Guide |  | 2.5d? | 2009-01-05 | 2009-01-07 | 174 |  |  | 39.5d | 2.14d |  | Carolyn Klinger | 20h |  |
| 176 | 2.2.3 | Update Install Guide |  | 0.51d? | 2009-01-05 | 2009-01-06 | 174 |  |  | 40.74d | 3.38d |  | Carolyn Klinger; Steve Langella [80%]; Scott Oster [50%]; Shannon Hastings [80%]; David Ervin [80%] | 8h |  |
| 177 | 2.2.4 | Update User Guide |  | 1.28d? | 2009-01-05 | 2009-01-06 | 174 |  |  | 37.36d | 0d |  | Carolyn Klinger; David Ervin [80%]; Scott Oster [50%]; Shannon Hastings [80%]; Steve Langella [80%] | 20h |  |
| 178 | 2.2.5 | Update design documents |  | 1d? | 2009-01-06 | 2009-01-07 | 177 |  |  | 37.36d | 0d |  | Scott Oster [50%]; Steve Langella [80%]; Shannon Hastings [80%]; David Ervin [80%] | 23.2h |  |
| 179 | 2.2.6 | Update caGrid overview |  | 1d? | 2009-01-07 | 2009-01-08 | 178 |  |  | 37.36d | 0d |  | Scott Oster [50%]; John Eisenschmidt | 12h |  |
| 180 | 2.2.7 | Update wiki |  | 1d? | 2009-01-08 | 2009-01-09 | 179 |  |  | 37.36d | 0d |  | Scott Oster [50%]; Steve Langella [80%]; Shannon Hastings [80%]; David Ervin [80%] | 23.2h |  |
| 181 | 2.2.8 | Finish | milestone | 0d | 2009-01-09 | 2009-01-09 | 175, 176, 180 |  |  | 37.36d |  |  |  |  |  |
| 182 | 2.3 | **Quality Assurance** |  | 21d? | 2009-01-26 A | 2009-02-23 |  |  | 21d? | 6d |  |  |  | 256h |  |
| 183 | 2.3.1 | Start | milestone | 0d | 2009-01-26 A | 2009-01-26 A | 172 | 100% |  |  |  | start no earlier than 2009-01-26 |  |  |  |
| 184 | 2.3.2 | Redeploy QA Grid |  | 5d | 2009-02-16 | 2009-02-20 | 183 |  |  | 6d | 0d | start no earlier than 2009-02-16 |  |  |  |
| 185 | 2.3.3 | Test GME |  | 1d? | 2009-02-23 | 2009-02-23 | 16, 184 |  |  | 6d |  |  | Quality Assurance | 8h |  |
| 186 | 2.3.4 | Test caDSR Replacement |  | 1d? | 2009-01-26 | 2009-01-26 | 183, 23 |  |  | 26d |  |  | Quality Assurance | 8h |  |
| 187 | 2.3.5 | Test WebSSO |  | 1d? | 2009-01-26 | 2009-01-26 | 183, 94 |  |  | 26d |  |  | Quality Assurance | 8h |  |
| 188 | 2.3.6 | Test release on new tech stack |  | 1d? | 2009-01-26 | 2009-01-26 | 183 |  |  | 26d |  |  | Quality Assurance | 8h |  |
| 189 | 2.3.7 | Test Introduce |  | 5d | 2009-01-26 | 2009-01-30 | 183, 145 |  |  | 22d |  |  | Quality Assurance | 40h |  |
| 190 | 2.3.8 | Test Security |  | 1d? | 2009-01-26 | 2009-01-26 | 183, 168 |  |  | 26d |  |  | Quality Assurance | 8h |  |
| 191 | 2.3.9 | Test Data Services |  | 1d? | 2009-01-26 | 2009-01-26 | 183, 130 |  |  | 26d |  |  | Quality Assurance | 8h |  |
| 192 | 2.3.10 | Test caGrid 1.3 Grid Services |  | 1d? | 2009-01-26 | 2009-01-26 | 183 |  |  | 0.5d | 0d |  | Quality Assurance | 8h |  |
| 193 | 2.3.11 | Test QA integration scenarios |  | 20d | 2009-01-27 | 2009-02-23 | 192 |  |  | 0.5d | 0d |  | Quality Assurance | 160h |  |
| 194 | 2.3.12 | Finish | milestone | 0d | 2009-02-23 | 2009-02-23 | 193 |  |  | 0.5d | 0d |  | Quality Assurance |  |  |

| ID | WBS | Task | Type | Duration | Start | Finish | Predecessors | Complete | Remaining | Total slack | Free slack | Constraint | Resources | Work | Actual work |
| --- | --- | --- | --- | --- | --- | --- | --- | --- | --- | --- | --- | --- | --- | --- | --- |
| 195 | 2.4 | **Deployment** |  | 27d? | 2009-01-26 A | 2009-03-03 |  | 23% | 20.67d? | 0d |  |  |  | 199.2h | 36h |
| 196 | 2.4.1 | Start | milestone | 0d | 2009-01-26 A | 2009-01-26 A | 172 | 100% |  |  |  | start no earlier than 2009-01-26 |  |  |  |
| 197 | 2.4.2 | Create release notes |  | 1d? | 2009-01-27 | 2009-01-27 | 196 |  |  | 25d |  |  | Scott Oster [50%] | 4h |  |
| 198 | 2.4.3 | Create 1.3 target_grid configurations |  | 2d? | 2009-01-28 A | 2009-01-29 A | 197 | 100% |  |  |  |  | Scott Oster [50%] | 8h | 8h |
| 199 | 2.4.4 | **Create 1.3 release branch in CVS** |  | 1d | 2009-02-23 A | 2009-02-24 A |  | 100% |  |  |  |  |  | 12h | 12h |
| 200 | 2.4.4.1 | Start | milestone | 0d | 2009-02-23 A | 2009-02-23 A | 194 | 100% |  |  |  |  |  |  |  |
| 201 | 2.4.4.2 | Update project versions |  | 1d | 2009-02-24 A | 2009-02-24 A | 200 | 100% |  |  |  |  | Scott Oster [50%] | 4h | 4h |
| 202 | 2.4.4.3 | update eclipse projects |  | 1d | 2009-02-24 A | 2009-02-24 A | 200 | 100% |  |  |  |  | Scott Oster [50%] | 4h | 4h |
| 203 | 2.4.4.4 | remove any projects which wont be released in 1.3 |  | 1d | 2009-02-24 A | 2009-02-24 A | 200 | 100% |  |  |  |  | Scott Oster [50%] | 4h | 4h |
| 204 | 2.4.4.5 | Finish | milestone | 0d | 2009-02-24 A | 2009-02-24 A | 201, 202, 203 | 100% |  |  |  |  |  |  |  |
| 205 | 2.4.5 | Update LICENSE |  | 1d? | 2009-01-26 A | 2009-01-26 A | 196 | 100% |  |  |  |  | John Eisenschmidt | 8h | 8h |
| 206 | 2.4.7 | Validate core services' metadata |  | 2d? | 2009-01-26 | 2009-01-27 | 196 |  |  | 24.5d | 24d |  | Shannon Hastings [80%]; Steve Langella [80%]; Scott Oster [50%]; David Ervin [80%] | 23.2h |  |
| 207 | 2.4.8 | publish release IVY repositories |  | 3d? | 2009-01-27 | 2009-01-29 | 196 |  |  | 22.5d | 22d |  | Scott Oster [50%] | 12h |  |
| 208 | 2.4.9 | create installer release |  | 2d? | 2009-01-27 | 2009-01-28 | 205 |  |  | 21.58d | 0d |  | Scott Oster [50%] | 8h |  |
| 209 | 2.4.10 | post installer properties file to FTP site |  | 2d? | 2009-01-26 | 2009-01-27 | 196 |  |  | 25d |  |  | Scott Oster [50%]; Systems | 12h |  |
| 210 | 2.4.11 | create gforge release |  | 2d? | 2009-01-27 | 2009-01-28 | 196 |  |  | 23.5d | 23d |  | Scott Oster [50%] | 8h |  |
| 211 | 2.4.12 | Write Deployment Instructions |  | 1.92d? | 2009-01-27 | 2009-01-28 | 196 |  |  | 24.08d |  |  | Steve Langella [80%]; Scott Oster [50%] | 20h |  |
| 212 | 2.4.14 | Redeploy Training Grid |  | 1.92d? | 2009-01-29 | 2009-01-30 | 208 |  |  | 21.58d | 21.08d |  | Steve Langella [80%]; Scott Oster [50%] | 20h |  |
| 213 | 2.4.15 | Redeploy Staging Grid |  | 2.5d? | 2009-02-24 | 2009-02-26 | 194 |  |  | 0.5d | 0d |  | Systems | 20h |  |
| 214 | 2.4.16 | Redeploy Production Grid |  | 2.5d? | 2009-02-26 | 2009-03-02 | 213 |  |  | 0.5d | 0d |  | Systems | 20h |  |
| 215 | 2.4.17 | Update Zope / Plome |  | 1d? | 2009-01-26 A | 2009-01-26 | 196 | 50% | 0.5d? | 25.5d | 25d |  | John Eisenschmidt | 8h | 4h |
| 216 | 2.4.18 | Update gforge |  | 1d? | 2009-01-26 | 2009-01-26 | 196 |  |  | 25.5d | 25d |  | John Eisenschmidt | 8h |  |
| 217 | 2.4.19 | Send Release Announcement |  | 1d? | 2009-03-03 A | 2009-03-03 | 214, 215, 216, 212, 210, 206, 207 | 50% | 0.5d? | 0d |  |  | John Eisenschmidt | 8h | 4h |
| 218 | 2.4.20 | Finish | milestone | 0d | 2009-03-03 | 2009-03-03 | 217 |  |  | 0d |  |  |  |  |  |
| 219 | 2.5 | Finish | milestone | 0d | 2009-03-03 | 2009-03-03 | 218 |  |  | 0d |  |  |  |  |  |

Notes:
- 212: In the past, we have deployed the training grid before other tiers, as we develop the deployment process document in doing so
