# caGrid_Portal-2-1

Schedule from MS Project, 2008-07-31 to 2008-10-23, A marks actual dates.
Personal

## Calendars

- Standard: Mon-Fri 08:00-12:00, 13:00-17:00; Sat-Sun off.

## Resources

| Resource |
| --- |
| Manav Kher |
| Joshua Phillips |
| Carolyln Klinger |
| John Eisenschmidt |
| Quality Assurance |
| Systems |

## Schedule

| ID | WBS | Task | Type | Duration | Start | Finish | Predecessors | Complete | Remaining | Total slack | Resources | Work | Actual work |
| --- | --- | --- | --- | --- | --- | --- | --- | --- | --- | --- | --- | --- | --- |
| 1 | 1.0 | **caGrid Portal 2.0.3 (hence forth 2.1)** |  | 57.25d | 2008-07-31 A | 2008-10-20 |  | 87% | 7.56d | 3.5d |  | 590.4h | 504.8h |
| 2 | 1.1 | Start | milestone | 0d | 2008-07-31 A | 2008-07-31 A |  | 100% |  |  |  |  |  |
| 3 | 1.2 | **Bug Fixes** |  | 5d | 2008-07-31 A | 2008-08-06 | 2 | 99% | 0d | 55.75d |  | 108h | 108h |
| 4 | 1.2.1 | Start | milestone | 0d | 2008-07-31 A | 2008-07-31 A |  | 100% |  |  |  |  |  |
| 5 | 1.2.2 | RuntimeException thrown in Portal 2.0.2 |  | 5d | 2008-07-31 A | 2008-08-06 A | 4 | 100% |  |  | Manav Kher [90%] | 36h | 36h |
| 6 | 1.2.3 | Problem with RFE 12079 implementation for Portal |  | 5d | 2008-07-31 A | 2008-08-06 A | 4 | 100% |  |  | Manav Kher [90%] | 36h | 36h |
| 7 | 1.2.4 | Portal is overloading GME service |  | 1d | 2008-07-31 A | 2008-07-31 A | 4 | 100% |  |  | Manav Kher [90%] | 7.2h | 7.2h |
| 8 | 1.2.5 | ConceptHierarchyNode.description field length is too short |  | 1d | 2008-08-01 A | 2008-08-01 A | 7 | 100% |  |  | Manav Kher [90%] | 7.2h | 7.2h |
| 9 | 1.2.6 | Simple discovery for CDE returns invalid results |  | 1d | 2008-08-04 A | 2008-08-04 A | 8 | 100% |  |  | Manav Kher [90%] | 7.2h | 7.2h |
| 10 | 1.2.7 | Service details Portlet caches information |  | 1d | 2008-08-05 A | 2008-08-05 A | 9 | 100% |  |  | Manav Kher [90%] | 7.2h | 7.2h |
| 11 | 1.2.8 | DCQL Aggregate query UI is not showing all services as targets |  | 1d | 2008-08-06 A | 2008-08-06 A | 10 | 100% |  |  | Manav Kher [90%] | 7.2h | 7.2h |
| 12 | 1.2.9 | Finish | milestone | 0d | 2008-08-06 | 2008-08-06 | 5, 6, 11, 7, 8, 9, 10 |  |  | 55.75d |  |  |  |
| 13 | 1.3 | **Enhancements** |  | 36.8d | 2008-07-31 A | 2008-09-19 | 2 | 99% | 0d | 23.95d |  | 280.8h | 280.8h |
| 14 | 1.3.1 | Start | milestone | 0d | 2008-07-31 A | 2008-07-31 A |  | 100% |  |  |  |  |  |
| 15 | 1.3.2 | User developed Portlets |  | 12d | 2008-07-31 A | 2008-08-22 A | 14 | 100% |  |  | Manav Kher [90%] | 86.4h | 86.4h |
| 16 | 1.3.3 | Discovery Results should show reasearch center information |  | 1d | 2008-07-31 A | 2008-07-31 A | 14 | 100% |  |  | Manav Kher [90%] | 7.2h | 7.2h |
| 17 | 1.3.4 | Admin UI for Banning/Unbanning |  | 5d | 2008-07-31 A | 2008-08-06 A | 14 | 100% |  |  | Manav Kher [90%] | 36h | 36h |
| 18 | 1.3.5 | Service Diagnostic Portlet |  | 15d | 2008-07-31 A | 2008-09-11 A | 14 | 100% |  |  | Manav Kher [90%] | 108h | 108h |
| 19 | 1.3.6 | Aggregation Performance Enhancements Design |  | 2d | 2008-09-11 A | 2008-09-15 A | 18 | 100% |  |  | Manav Kher [90%] | 14.4h | 14.4h |
| 20 | 1.3.7 | Service Status should be highlighted for non Active Services in the Portal |  | 1d | 2008-09-15 A | 2008-09-16 A | 19 | 100% |  |  | Manav Kher [90%] | 7.2h | 7.2h |
| 21 | 1.3.8 | Better Sorting/Visibility of Active and Inactive Services in the Portal |  | 1d | 2008-09-16 A | 2008-09-17 A | 20 | 100% |  |  | Manav Kher [90%] | 7.2h | 7.2h |
| 22 | 1.3.9 | Display Portal Version Number |  | 1d | 2008-09-17 A | 2008-09-18 A | 21 | 100% |  |  | Manav Kher [90%] | 7.2h | 7.2h |
| 23 | 1.3.10 | Portal should by default build against the training tier |  | 1d | 2008-09-18 A | 2008-09-19 A | 22 | 100% |  |  | Manav Kher [90%] | 7.2h | 7.2h |
| 24 | 1.3.11 | Finish | milestone | 0d | 2008-09-19 | 2008-09-19 | 15, 16, 17, 18, 19, 20, 21, 23, 22 |  |  | 23.95d |  |  |  |

| ID | WBS | Task | Type | Duration | Start | Finish | Predecessors | Complete | Remaining | Total slack | Free slack | Constraint | Resources | Work | Actual work |
| --- | --- | --- | --- | --- | --- | --- | --- | --- | --- | --- | --- | --- | --- | --- | --- |
| 25 | 1.4 | **Documentation** |  | 7.6d | 2008-09-22 A | 2008-10-01 |  | 86% | 1.05d | 16.15d |  |  |  | 114h | 98h |
| 26 | 1.4.1 | Start | milestone | 0d | 2008-09-22 A | 2008-09-22 A | 12, 24 | 100% |  |  |  | start no earlier than 2008-09-22 |  |  |  |
| 27 | 1.4.2 | Documentation for User-developed Portlets |  | 2d | 2008-09-29 A | 2008-09-30 A | 26 | 100% |  |  |  |  | Manav Kher [90%] | 14.4h | 14.4h |
| 28 | 1.4.3 | Update Admin Guide |  | 4d | 2008-09-22 A | 2008-09-25 | 26 | 75% | 1d | 19.75d | 3.6d |  | Carolyln Klinger | 32h | 24h |
| 29 | 1.4.4 | Update Install Guide |  | 3d | 2008-09-22 A | 2008-09-26 | 26 | 75% | 0.75d | 19.45d | 3.3d |  | Carolyln Klinger | 24h | 18h |
| 30 | 1.4.5 | Update User Guide |  | 5d | 2008-09-22 A | 2008-10-01 | 26 | 95% | 0.25d | 16.15d | 0d |  | Carolyln Klinger | 40h | 38h |
| 31 | 1.4.6 | Release Notes |  | 0.5d | 2008-09-29 A | 2008-09-29 A | 26 | 100% |  |  |  |  | Manav Kher [90%] | 3.6h | 3.6h |
| 32 | 1.4.7 | Finish | milestone | 0d | 2008-10-01 | 2008-10-01 | 28, 29, 30, 31, 27 |  |  | 16.15d |  |  |  |  |  |
| 33 | 1.5 | **QA** |  | 5d | 2008-09-29 A | 2008-10-03 | 2 | 50% | 2.5d | 5d |  |  |  | 36h | 18h |
| 34 | 1.5.1 | Start | milestone | 0d | 2008-09-29 A | 2008-09-29 A | 12, 24 | 100% |  |  |  | start no earlier than 2008-09-29 |  |  |  |
| 35 | 1.5.2 | Support QA during testing |  | 5d | 2008-09-29 A | 2008-10-03 | 34 | 50% | 2.5d | 5d | 0d |  | Manav Kher [90%] | 36h | 18h |
| 36 | 1.5.3 | Finish | milestone | 0d | 2008-10-03 | 2008-10-03 | 35 |  |  | 5d |  |  |  |  |  |
| 37 | 1.6 | **Deployment** |  | 5.25d | 2008-10-13 | 2008-10-20 | 2 |  |  | 0d |  |  |  | 51.6h |  |
| 38 | 1.6.1 | Start | milestone | 0d | 2008-10-13 | 2008-10-13 | 36 |  |  | 0d |  | start no earlier than 2008-10-13 |  |  |  |
| 39 | 1.6.2 | Stage |  | 1d | 2008-10-13 | 2008-10-13 | 38 |  |  | 0d |  |  | Systems | 8h |  |
| 40 | 1.6.3 | App Scan |  | 3d | 2008-10-14 | 2008-10-16 | 39 |  |  | 0d |  |  | Systems | 24h |  |
| 41 | 1.6.4 | Production |  | 1d | 2008-10-17 | 2008-10-17 | 40 |  |  | 0d |  |  | Systems | 8h |  |
| 42 | 1.6.5 | Update Plome |  | 0.25d | 2008-10-13 | 2008-10-13 | 38 |  |  | 8.5d |  |  | John Eisenschmidt | 2h |  |
| 43 | 1.6.6 | Update gforge |  | 0.5d | 2008-10-13 | 2008-10-13 | 38 |  |  | 8.25d |  |  | John Eisenschmidt; Manav Kher [90%] | 7.6h |  |
| 44 | 1.6.7 | Send Release Announcement |  | 0.25d | 2008-10-20 | 2008-10-20 | 41 |  |  | 0d |  |  | John Eisenschmidt | 2h |  |
| 45 | 1.6.5 | Finish | milestone | 0d | 2008-10-20 | 2008-10-20 | 44 |  |  | 0d |  |  |  |  |  |
| 46 | 1.7 | Finish | milestone | 0d | 2008-10-20 | 2008-10-20 | 45 |  |  | 0d |  |  |  |  |  |
| 47 | 2.0 | **caGrid Portal 2.0.4** |  | 58.75d? | 2008-08-01 | 2008-10-23 |  |  |  | 0d |  |  |  | 21.6h |  |
| 48 | 2.2 | Start | milestone | 0d | 2008-10-20 | 2008-10-20 | 46 |  |  | 0d |  | start no earlier than 2008-07-31 |  |  |  |

| ID | WBS | Task | Type | Duration | Start | Finish | Predecessors | Total slack | Free slack | Constraint | Resources | Work |
| --- | --- | --- | --- | --- | --- | --- | --- | --- | --- | --- | --- | --- |
| 49 | 2.3 | **Bug Fixes** |  | 0d | 2008-10-20 | 2008-10-20 |  | 1d |  |  |  |  |
| 50 | 2.3.1 | Start | milestone | 0d | 2008-10-20 | 2008-10-20 | 48 | 1d | 0d |  |  |  |
| 51 | 2.3.2 | Finish | milestone | 0d | 2008-10-20 | 2008-10-20 | 50 | 1d |  |  |  |  |
| 52 | 2.4 | **Enhancements** |  | 1d? | 2008-10-20 | 2008-10-21 |  | 0d |  |  |  | 21.6h |
| 53 | 2.4.1 | Start | milestone | 0d | 2008-10-20 | 2008-10-20 | 48 | 0d |  |  |  |  |
| 54 | 2.4.2 | GAARDS UI Integration |  | 1d? | 2008-10-20 | 2008-10-21 | 53 | 0d |  |  |  |  |
| 55 | 2.4.3 | Federated Query Builder Enhancements |  | 1d? | 2008-10-20 | 2008-10-21 | 53 | 0d |  |  |  |  |
| 56 | 2.4.4 | Shared Query Enhancements |  | 1d? | 2008-10-20 | 2008-10-21 | 53 | 0d |  |  |  |  |
| 57 | 2.4.5 | Notification Framework |  | 1d? | 2008-10-20 | 2008-10-21 | 53 | 0d |  |  |  |  |
| 58 | 2.4.6 | Provide RSS feed for newly discovered services |  | 1d? | 2008-10-20 | 2008-10-21 | 53 | 0d |  |  |  |  |
| 59 | 2.4.7 | Support Parameterized Queries |  | 1d? | 2008-10-20 | 2008-10-21 | 53 | 0d |  |  |  |  |
| 60 | 2.4.8 | address xss issues in portal input fields |  | 1d? | 2008-10-20 | 2008-10-21 | 53 | 0d |  |  |  |  |
| 61 | 2.4.9 | Portal needs participant admin UI |  | 1d? | 2008-10-20 | 2008-10-21 | 53 | 0d |  |  | Manav Kher [90%] | 7.2h |
| 62 | 2.4.10 | Provide interface to make participant information update requests. |  | 1d? | 2008-10-20 | 2008-10-21 | 53 | 0d |  |  | Manav Kher [90%] | 7.2h |
| 63 | 2.4.11 | Portal EVS autocompleter should allow user to select where in the metadata the match shold occur. |  | 1d? | 2008-10-20 | 2008-10-21 | 53 | 0d |  |  | Manav Kher [90%] | 7.2h |
| 64 | 2.4.12 | Finish | milestone | 0d | 2008-10-21 | 2008-10-21 | 54, 55, 56, 57, 58, 59, 60, 61, 62, 63 | 0d |  |  |  |  |
| 65 | 2.5 | **Documentation** |  | 1d? | 2008-10-21 | 2008-10-22 |  | 1.5d |  |  |  |  |
| 66 | 2.5.1 | Start | milestone | 0d | 2008-10-21 | 2008-10-21 | 51, 64 | 1.5d | 0d | start no earlier than 2008-07-31 |  |  |
| 67 | 2.5.2 | Update Admin Guide |  | 1d? | 2008-10-21 | 2008-10-22 | 66 | 1.5d | 0d | start no earlier than 2008-08-01 |  |  |
| 68 | 2.5.3 | Update Install Guide |  | 1d? | 2008-10-21 | 2008-10-22 | 66 | 1.5d | 0d | start no earlier than 2008-08-01 |  |  |
| 69 | 2.5.4 | Update User Guide |  | 1d? | 2008-10-21 | 2008-10-22 | 66 | 1.5d | 0d | start no earlier than 2008-08-01 |  |  |
| 70 | 2.5.5 | Release Notes |  | 1d? | 2008-10-21 | 2008-10-22 | 66 | 1.5d | 0d | start no earlier than 2008-08-01 |  |  |
| 71 | 2.5.6 | Finish | milestone | 0d | 2008-10-22 | 2008-10-22 | 67, 68, 69, 70 | 1.5d |  | start no earlier than 2008-08-01 |  |  |
| 72 | 2.6 | **QA** |  | 2.5d | 2008-10-21 | 2008-10-23 |  | 0d |  |  |  |  |
| 73 | 2.6.1 | Start | milestone | 0d | 2008-10-21 | 2008-10-21 | 51, 64 | 0d |  | start no earlier than 2008-07-31 |  |  |
| 74 | 2.6.2 | Support QA during testing |  | 2.5d | 2008-10-21 | 2008-10-23 | 73 | 0d |  | start no earlier than 2008-08-01 |  |  |
| 75 | 2.6.3 | Finish | milestone | 0d | 2008-10-23 | 2008-10-23 | 74 | 0d |  | start no earlier than 2008-08-01 |  |  |

| ID | WBS | Task | Type | Duration | Start | Finish | Predecessors | Total slack | Free slack | Constraint |
| --- | --- | --- | --- | --- | --- | --- | --- | --- | --- | --- |
| 76 | 2.7 | **Deployment** |  | 5.25d | 2008-08-01 | 2008-08-11 |  | 53.5d |  |  |
| 77 | 2.7.1 | Start | milestone | 0d | 2008-08-01 | 2008-08-01 |  | 53.5d | 0d | start no earlier than 2008-08-01 |
| 78 | 2.7.2 | Stage |  | 1d | 2008-08-04 | 2008-08-04 | 77 | 53.5d | 0d | start no earlier than 2008-08-04 |
| 79 | 2.7.3 | App Scan |  | 3d | 2008-08-05 | 2008-08-07 | 78 | 53.5d | 0d | start no earlier than 2008-08-05 |
| 80 | 2.7.4 | Production |  | 1d | 2008-08-08 | 2008-08-08 | 79 | 53.5d | 0d | start no earlier than 2008-08-06 |
| 81 | 2.7.5 | Update Plome |  | 0.25d | 2008-08-04 | 2008-08-04 | 77 | 58.5d |  | start no earlier than 2008-08-04 |
| 82 | 2.7.6 | Update gforge |  | 0.5d | 2008-08-04 | 2008-08-04 | 77 | 58.25d |  | start no earlier than 2008-08-04 |
| 83 | 2.7.7 | Send Release Announcement |  | 0.25d | 2008-08-11 | 2008-08-11 | 80 | 53.5d | 0d | start no earlier than 2008-08-07 |
| 84 | 2.7.8 | Finish | milestone | 0d | 2008-08-11 | 2008-08-11 | 83 | 53.5d | 0d | start no earlier than 2008-08-07 |
| 85 | 2.8 | Finish | milestone | 0d | 2008-08-11 | 2008-08-11 | 84 | 53.5d |  | start no earlier than 2008-08-07 |
